# LR1

Schedule from MS Project, 2024-03-01 to 2024-09-19, costs in ₽.
Команда разработчиков из 16 человек занимается созданием карты города на основе собственного модуля отображения. Проект должен быть завершен в течение 6 месяцев. Бюджет проекта: 50 000 рублей.

## Calendars

- Standard: Mon-Fri 08:00-12:00, 13:00-17:00; Sat-Sun off. Exceptions (off unless hours are given): 2024-03-07 09:00-12:00, 13:00-17:00 (7 марта - короткий день), 2024-03-08 (8 марта), 2024-04-27 09:00-12:00, 13:00-18:00 (27 апреля - рабочий день), 2024-04-29 to 2024-05-01 (1 мая), 2024-05-08 09:00-12:00, 13:00-17:00 (8 мая - короткий день), 2024-05-09 to 2024-05-10 (9 мая), 2024-06-11 09:00-12:00, 13:00-17:00 (11 июня - короткий день), 2024-06-12 (12 июня).

## Resources

| Resource | Group | Rate | Cost per use |
| --- | --- | --- | --- |
| Ведущий программист | Программирование | 10 | 100 |
| Программист 1 | Программирование | 7 | 50 |
| Программист 2 | Программирование | 7 | 50 |
| Программист 3 | Программирование | 7 | 50 |
| Системный аналитик | Анализ | 7 | 300 |
| Художник-дизайнер | Дизайн | 20 | 70 |
| Технический писатель | Документация | 8 | 20 |
| Web-дизайнер | Internet | 5 | 50 |
| 3D аниматор | Дизайн | 7 | 70 |
| Мультимедиа-корреспондент | М-медиа | 8 | 20 |
| Наборщик данных 1 | Ввод данных | 3 | 10 |
| Наборщик данных 2 | Ввод данных | 2 | 10 |
| Наборщик данных 3 | Ввод данных | 2 | 10 |
| Наборщик данных 4 | Ввод данных | 2 | 10 |
| Наборщик данных 5 | Ввод данных | 2 | 10 |
| Программист 4 | Программирование | 2 | 10 |
| 1000 |  |  |  |
| Затр |  |  |  |
| Сервер |  | 2 |  |

## Schedule

| ID | WBS | Task | Type | Duration | Start | Finish | Predecessors | Baseline start | Baseline finish | Baseline duration | Total slack | Free slack | Resources | Work | Cost | Baseline cost |
| --- | --- | --- | --- | --- | --- | --- | --- | --- | --- | --- | --- | --- | --- | --- | --- | --- |
| 1 | 1 | Начало проекта | milestone | 0w | 2024-03-01 | 2024-03-01 |  | 2024-03-01 | 2024-03-01 | 0w | 70d | 0d |  |  |  |  |
| 2 | 2 | **Создание интерфейса** |  | 110d | 2024-03-01 | 2024-08-12 | 1 | 2024-03-01 | 2024-08-12 | 110d | 0d |  |  | 560h | 6,150 | 6,150 |
| 3 | 2.1 | **Разработка дизайна интерфейса** |  | 25d | 2024-03-01 | 2024-04-08 |  | 2024-03-01 | 2024-04-08 | 25d | 70d | 0d |  | 320h | 4,010 | 4,010 |
| 4 | 2.1.1 | Разработка 2D графических элементов |  | 3w | 2024-03-01 | 2024-03-25 |  | 2024-03-01 | 2024-03-25 | 3w | 70d | 0d | Художник-дизайнер | 120h | 2,470 | 2,470 |
| 5 | 2.1.2 | Разработка 3D графических элементов |  | 2w | 2024-03-01 | 2024-03-18 | 4SS | 2024-03-01 | 2024-03-18 | 2w | 70d | 0d | 3D аниматор | 80h | 630 | 630 |
| 6 | 2.1.3 | Создание заставки |  | 3w | 2024-03-18 | 2024-04-08 | 5 | 2024-03-18 | 2024-04-08 | 3w | 70d |  | 3D аниматор | 120h | 910 | 910 |
| 7 | 2.2 | Программирование интерфейса |  | 3w | 2024-07-22 | 2024-08-12 | 3, 12 | 2024-07-22 | 2024-08-12 | 3w | 0d |  | Программист 3; Программист 4 | 240h | 1,140 | 1,140 |
| 8 | 3 | **Построение базы объектов** |  | 85d | 2024-03-01 | 2024-07-08 |  | 2024-03-01 | 2024-07-08 | 85d | 53d |  | Сервер | 5819h | 14,528 | 14,528 |
| 9 | 3.1 | Анализ и построение структуры базы объектов |  | 2w | 2024-03-01 | 2024-03-18 |  | 2024-03-01 | 2024-03-18 | 2w | 53d | 0d | Системный аналитик | 80h | 860 | 860 |
| 10 | 3.2 | Программирование средств обработки базы объектов |  | 3w | 2024-03-18 | 2024-04-08 | 9 | 2024-03-18 | 2024-04-08 | 3w | 53d | 0d | Программист 3; Программист 4 | 240h | 1,140 | 1,140 |
| 11 | 3.3 | Наполнение базы объектов |  | 12w | 2024-04-08 | 2024-07-08 | 10 | 2024-04-08 | 2024-07-08 | 12w | 53d |  | Наборщик данных 1; Наборщик данных 2; Наборщик данных 3; Наборщик данных 4; Наборщик данных 5 | 2400h | 5,330 | 5,330 |
| 12 | 4 | **Создание ядра GIS** |  | 95d | 2024-03-01 | 2024-07-22 |  | 2024-03-01 | 2024-07-22 | 95d | 0d |  |  | 1880h | 17,120 | 17,120 |
| 13 | 4.1 | Анализ и проектирование ядра |  | 3w | 2024-03-01 | 2024-03-25 |  | 2024-03-01 | 2024-03-25 | 3w | 0d |  | Системный аналитик; Ведущий программист | 240h | 2,440 | 2,440 |
| 14 | 4.2 | Создание модели ядра |  | 5w | 2024-03-25 | 2024-04-27 | 13 | 2024-03-25 | 2024-04-27 | 5w | 0d |  | Ведущий программист; Программист 1 | 400h | 3,550 | 3,550 |
| 15 | 4.3 | Тестирование модели ядра |  | 1w | 2024-04-27 | 2024-05-08 | 14 | 2024-04-27 | 2024-05-08 | 1w | 0d |  | Программист 1 | 40h | 330 | 330 |
| 16 | 4.4 | Создание рабочей версии ядра |  | 10w | 2024-05-08 | 2024-07-22 | 15 | 2024-05-08 | 2024-07-22 | 10w | 0d |  | Ведущий программист; Программист 1; Программист 2 | 1200h | 9,800 | 9,800 |
| 17 | 5 | Создание мультимедиа – наполнения |  | 6w | 2024-04-08 | 2024-05-24 | 3 | 2024-04-08 | 2024-05-24 | 6w | 83d |  | Мультимедиа-корреспондент | 240h | 1,940 | 1,940 |
| 18 | 6 | Создание справочной системы |  | 2w | 2024-08-12 | 2024-08-26 | 7 | 2024-08-12 | 2024-08-26 | 2w | 18d |  | Технический писатель | 80h | 660 | 660 |
| 19 | 7 | **Создание руководства пользователя** |  | 17d | 2024-07-29 | 2024-08-21 | 7FS-10d | 2024-07-29 | 2024-08-21 | 17d | 0d |  |  | 160h | 1,850 | 1,850 |
| 20 | 7.1 | Разработка дизайна руководства |  | 1w | 2024-07-29 | 2024-08-05 |  | 2024-07-29 | 2024-08-05 | 1w | 0d |  | Художник-дизайнер | 40h | 870 | 870 |
| 21 | 7.2 | Написание руководства пользователя |  | 3w | 2024-07-31 | 2024-08-21 | 20SS+2d | 2024-07-31 | 2024-08-21 | 3w | 0d |  | Технический писатель | 120h | 980 | 980 |
| 22 | 8 | **Создание web – сайта и поддержка** |  | 21d | 2024-07-31 | 2024-08-29 |  | 2024-07-31 | 2024-08-29 | 21d | 0d |  |  | 248h | 2,210 | 2,210 |
| 23 | 8.1 | Разработка структуры сайта |  | 1d | 2024-07-31 | 2024-08-01 | 21SS | 2024-07-31 | 2024-08-01 | 1d | 0d |  | Web-дизайнер | 8h | 90 | 90 |
| 24 | 8.2 | Разработка дизайна сайта |  | 1w | 2024-08-01 | 2024-08-08 | 23 | 2024-08-01 | 2024-08-08 | 1w | 0d |  | Web-дизайнер; Художник-дизайнер; 3D аниматор | 120h | 1,470 | 1,470 |
| 25 | 8.3 | Наполнение сайта |  | 3w | 2024-08-08 | 2024-08-29 | 24 | 2024-08-08 | 2024-08-29 | 3w | 0d |  | Web-дизайнер | 120h | 650 | 650 |
| 26 | 9 | Тестирование сайта |  | 4w | 2024-08-22 | 2024-09-19 | 22FS-1w | 2024-08-22 | 2024-09-19 | 4w | 0d |  | Ведущий программист; Программист 1; Программист 2 | 480h | 4,040 | 4,040 |
| 27 | 10 | Сдача сайта в эксплуатацию | milestone | 0w | 2024-09-19 | 2024-09-19 | 26 | 2024-09-19 | 2024-09-19 | 0w | 0d |  |  |  |  |  |
